# 机端部署App开发计划

Schedule from a web Gantt chart, 2024-04-22 to 2024-05-31.
Saturdays and Sundays are off

## Schedule

| ID | WBS | Task | Duration | Start | Finish | Predecessors | Status |
| --- | --- | --- | --- | --- | --- | --- | --- |
| 2 | 1 | **需求确认** | 11d | 2024-04-22 | 2024-05-06 |  |  |
| 3 | 1.1 | 需求定义 | 1d | 2024-04-22 | 2024-04-22 |  |  |
| 4 | 1.2 | 需求评审发布 | 9d | 2024-04-23 | 2024-05-03 | 3 | waiting |
| 5 | 1.3 | 成熟度定义 | 1d | 2024-05-06 | 2024-05-06 | 4 | waiting |
| 6 | 2 | **方案设计** | 20d | 2024-05-06 | 2024-05-31 |  |  |
| 7 | 2.1 | 系统方案设计 | 5d | 2024-05-06 | 2024-05-10 | 4 | waiting |
| 8 | 2.2 | 系统方案评审发布 | 1d | 2024-05-13 | 2024-05-13 | 7 | waiting |
| 9 | 2.3 | UX方案设计评审 | 20d | 2024-05-06 | 2024-05-31 | 4 | waiting |
| 10 | 2.4 | 接口定义 | 1d | 2024-05-14 | 2024-05-14 | 8 | waiting |
| 11 | 3 | **软件开发** | 4d | 2024-05-15 | 2024-05-20 |  |  |
| 12 | 3.1 | **智能化软件** | 2d | 2024-05-15 | 2024-05-16 |  |  |
| 13 | 3.1.1 | 代码实现 | 1d | 2024-05-15 | 2024-05-15 | 10 | waiting |
| 14 | 3.1.2 | 单元测试 | 1d | 2024-05-16 | 2024-05-16 | 13 | waiting |
| 15 | 3.2 | **云控系统软件** | 2d | 2024-05-15 | 2024-05-16 |  |  |
| 16 | 3.2.1 | 代码实现 | 1d | 2024-05-15 | 2024-05-15 | 10 | waiting |
| 17 | 3.2.2 | 单元测试 | 1d | 2024-05-16 | 2024-05-16 | 16 | waiting |
| 18 | 3.3 | **应用化系统软件** | 2d | 2024-05-15 | 2024-05-16 |  |  |
| 19 | 3.3.1 | 代码实现 | 1d | 2024-05-15 | 2024-05-15 | 10 | waiting |
| 20 | 3.3.2 | 单元测试 | 1d | 2024-05-16 | 2024-05-16 | 19 | waiting |
| 21 | 3.4 | 功能联调 | 1d | 2024-05-17 | 2024-05-17 | 14, 17, 20 | waiting |
| 22 | 3.5 | 版本提测 | 1d | 2024-05-20 | 2024-05-20 | 21 | waiting |
| 23 | 4 | **集成测试** | 2d | 2024-05-21 | 2024-05-22 |  |  |
| 24 | 4.1 | 功能性能测试 | 1d | 2024-05-21 | 2024-05-21 | 22 | waiting |
| 25 | 4.2 | Bug修复 | 1d | 2024-05-22 | 2024-05-22 | 24 | waiting |

| ID | WBS | Task | Duration | Start | Finish | Predecessors | Status |
| --- | --- | --- | --- | --- | --- | --- | --- |
| 26 | 5 | **系统确认** | 1d | 2024-05-23 | 2024-05-23 |  |  |
| 27 | 5.1 | 产品验收 | 1d | 2024-05-23 | 2024-05-23 | 25 | waiting |
